# 项目进度计划

Schedule from MS Project, 2024-04-08 to 2024-06-07, costs in $, A marks actual dates.

## Calendars

- 标准: Mon-Fri 08:00-12:00, 13:00-17:00; Sat-Sun off.

## Resources

| Resource | Rate | Cost per use |
| --- | --- | --- |
| <新资源> |  |  |
| 应用服务器 | 1 |  |
| 备份服务器 | 1 |  |
| 测试服务器 | 1 |  |
| 主数据库 | 1 |  |
| 备份数据库 | 1 |  |
| 李一柯 | 30 |  |
| 冯韵涵 | 30 |  |
| 邱子晴 | 30 |  |
| 彭炳桥 | 30 |  |
| 郑俊烽 | 30 |  |
| 王正东 | 30 |  |
| 金弋杰 | 60 | 1 |
| 乔凯星 | 30 |  |
| 周扬 | 30 |  |
| 宋瑜航 | 30 |  |
| 廖文远 | 90 |  |

## Schedule

| ID | WBS | Task | Type | Duration | Start | Finish | Predecessors | Complete | Remaining | Baseline start | Baseline finish | Baseline duration | Total slack | Free slack | Constraint | Resources | Work | Actual work | Cost | Actual cost | 参与人员 |
| --- | --- | --- | --- | --- | --- | --- | --- | --- | --- | --- | --- | --- | --- | --- | --- | --- | --- | --- | --- | --- | --- |
| 2 | 1 | **开发环境准备** |  | 10d? | 2024-04-08 A | 2024-04-19 |  | 33% | 6.74d? | 2024-04-08 | 2024-04-19 | 10d? |  |  |  |  | 212.4h | 54h | 6,372 | 1,620 |  |
| 3 | 1.1 | 服务器初始化 | manual | 2d | 2024-04-08 A | 2024-04-09 A |  | 100% |  | 2024-04-08 | 2024-04-09 | 2d |  |  | finish no earlier than 2024-04-09 | 李一柯; 冯韵涵; 彭炳桥 | 32h | 32h | 960 | 960 | 李一柯，冯蕴涵 |
| 4 | 1.2 | 数据库初始化 | manual | 1d | 2024-04-08 A | 2024-04-08 A |  | 100% |  | 2024-04-08 | 2024-04-09 | 2d |  |  | finish no earlier than 2024-04-09 | 邱子晴; 彭炳桥; 王正东 | 16h | 16h | 480 | 480 |  |
| 5 | 1.3 | **系统管理** |  | 4d? | 2024-04-10 A | 2024-04-15 | 3, 4, 24 | 12% | 3.54d? | 2024-04-10 | 2024-04-16 | 5d? | 0d |  |  |  | 132.4h | 6h | 3,972 | 180 |  |
| 6 | 1.3.1 | **历史记录管理** |  | 1.5d? | 2024-04-11 A | 2024-04-15 |  | 50% | 0.75d? | 2024-04-11 | 2024-04-16 | 3.1d? | -0.5d | 0d |  |  | 12h | 6h | 360 | 180 |  |
| 7 | 1.3.1.1 | 备份系统 |  | 1d? | 2024-04-11 A | 2024-04-12 | 9, 10, 11, 12, 13, 14, 15, 16, 17, 18, 19, 20 | 75% | 0.25d? | 2024-04-11 | 2024-04-12 | 1d? | -3.4d | 0d |  | 李一柯 | 8h | 6h | 240 | 180 |  |
| 8 | 1.3.1.2 | 日志记录 |  | 0.5d | 2024-04-12 | 2024-04-15 | 3, 4, 7 |  |  | 2024-04-15 | 2024-04-16 | 2d | -3.4d | 0d | finish no earlier than 2024-04-12 | 李一柯 | 4h |  | 120 |  |  |
| 9 | 1.3.2 | **应用运行情况管理** |  | 1d | 2024-04-10 | 2024-04-11 |  |  |  | 2024-04-10 | 2024-04-11 | 1d | 0d |  |  |  | 24h |  | 720 |  |  |
| 10 | 1.3.2.1 | 运行情况监测 | manual | 0.5d | 2024-04-10 | 2024-04-11 | 3, 12, 13, 14, 15, 16, 17, 18, 19, 20 |  |  | 2024-04-10 | 2024-04-11 | 0.5d |  |  |  | 郑俊烽; 冯韵涵; 李一柯 | 12h |  | 360 |  |  |
| 11 | 1.3.2.2 | 参数监测 | manual | 0.5d | 2024-04-11 | 2024-04-11 | 10, 12, 16 |  |  | 2024-04-11 | 2024-04-11 | 0.5d |  |  |  | 郑俊烽; 冯韵涵; 李一柯 | 12h |  | 360 |  |  |
| 12 | 1.3.3 | **硬件运行情况管理** |  | 0.9d | 2024-04-10 | 2024-04-10 | 3, 4 |  |  | 2024-04-10 | 2024-04-10 | 0.9d | 0d |  |  |  | 7.2h |  | 216 |  |  |
| 13 | 1.3.3.1 | CPU运行检测 | manual | 0.3d | 2024-04-10 | 2024-04-10 | 3, 4 |  |  | 2024-04-10 | 2024-04-10 | 0.3d |  |  |  | 彭炳桥 | 2.4h |  | 72 |  |  |
| 14 | 1.3.3.2 | 内存运行检测 | manual | 0.3d | 2024-04-10 | 2024-04-10 | 13 |  |  | 2024-04-10 | 2024-04-10 | 0.3d |  |  |  | 彭炳桥 | 2.4h |  | 72 |  |  |
| 15 | 1.3.3.3 | 其他硬件监测 | manual | 0.3d | 2024-04-10 | 2024-04-10 | 14 |  |  | 2024-04-10 | 2024-04-10 | 0.3d |  |  |  | 彭炳桥 | 2.4h |  | 72 |  |  |
| 16 | 1.3.4 | **网络运行情况管理** |  | 0.5d | 2024-04-10 | 2024-04-10 |  |  |  | 2024-04-10 | 2024-04-10 | 0.5d | 0d |  |  |  | 14h |  | 420 |  |  |
| 17 | 1.3.4.1 | 前端网站连接维稳 | manual | 0.25d | 2024-04-10 | 2024-04-10 | 3, 24, 25, 26 |  |  | 2024-04-10 | 2024-04-10 | 0.25d |  |  |  | 李一柯; 宋瑜航 | 4h |  | 120 |  |  |
| 18 | 1.3.4.2 | 备份服务器连接维稳 | manual | 0.25d | 2024-04-10 | 2024-04-10 | 3, 17 |  |  | 2024-04-10 | 2024-04-10 | 0.25d |  |  |  | 李一柯; 宋瑜航 | 4h |  | 120 |  |  |
| 19 | 1.3.4.3 | 测试服务器连接维稳 | manual | 0.25d | 2024-04-10 | 2024-04-10 | 3 |  |  | 2024-04-10 | 2024-04-10 | 0.25d |  |  |  | 冯韵涵 | 2h |  | 60 |  |  |
| 20 | 1.3.4.4 | 后端数据库连接维稳 | manual | 0.25d | 2024-04-10 | 2024-04-10 | 4, 17 |  |  | 2024-04-10 | 2024-04-10 | 0.25d |  |  |  | 邱子晴; 王正东 | 4h |  | 120 |  |  |
| 21 | 1.3.5 | **告警系统** |  | 2.1d | 2024-04-11 | 2024-04-15 |  |  |  | 2024-04-11 | 2024-04-16 | 3d | 0d |  |  |  | 75.2h |  | 2,256 |  |  |
| 22 | 1.3.5.1 | 警报启动 | manual | 1d | 2024-04-11 | 2024-04-12 | 3, 4, 9, 12, 13, 14, 15, 16, 17, 18, 19, 20 |  |  | 2024-04-11 | 2024-04-12 | 1d |  |  |  | 冯韵涵; 王正东; 邱子晴; 彭炳桥; 宋瑜航 | 40h |  | 1,200 |  |  |
| 23 | 1.3.5.2 | 警报解除 | manual | 1.1d | 2024-04-12 | 2024-04-15 | 22 |  |  | 2024-04-12 | 2024-04-16 | 2d |  |  |  | 彭炳桥; 邱子晴; 王正东; 宋瑜航 | 35.2h |  | 1,056 |  |  |
| 24 | 1.4 | **前端视图准备** |  | 2d? | 2024-04-08 | 2024-04-09 |  |  |  | 2024-04-08 | 2024-04-09 | 2d? | -0.5d | 0d |  |  | 32h |  | 960 |  |  |
| 25 | 1.4.1 | 用户视图 |  | 1d? | 2024-04-08 | 2024-04-08 |  |  |  | 2024-04-08 | 2024-04-08 | 1d? | -0.5d | 0d |  | 郑俊烽; 宋瑜航 | 16h |  | 480 |  |  |
| 26 | 1.4.2 | 权限接口 |  | 1d? | 2024-04-09 | 2024-04-09 | 25 |  |  | 2024-04-09 | 2024-04-09 | 1d? | -0.5d | 0d |  | 郑俊烽; 宋瑜航 | 16h |  | 480 |  |  |

| ID | WBS | Task | Type | Duration | Start | Finish | Predecessors | Baseline start | Baseline finish | Baseline duration | Total slack | Constraint | Resources | Work | Cost |
| --- | --- | --- | --- | --- | --- | --- | --- | --- | --- | --- | --- | --- | --- | --- | --- |
| 27 | 2 | **账号登录注册模块** |  | 12d | 2024-04-10 | 2024-04-25 | 2, 5 | 2024-04-10 | 2024-04-29 | 14d? | 0d |  |  | 115.2h | 3,456 |
| 28 | 2.1 | **权限管理** |  | 4d | 2024-04-10 | 2024-04-15 |  | 2024-04-10 | 2024-04-17 | 5.9d | 0d |  |  | 11.2h | 336 |
| 29 | 2.1.1 | 用户管理 | milestone, manual | 0d | 2024-04-12 | 2024-04-15 | 4, 30 | 2024-04-12 | 2024-04-17 | 2.4d |  | start no earlier than 2024-04-12 | 邱子晴 |  |  |
| 30 | 2.1.2 | 角色管理 | manual | 2d | 2024-04-10 | 2024-04-12 | 4 | 2024-04-10 | 2024-04-12 | 2d |  |  | 李一柯; 彭炳桥 | 11.2h | 336 |
| 31 | 2.2 | **账号管理** |  | 8d | 2024-04-16 | 2024-04-25 |  | 2024-04-22 | 2024-04-29 | 6d? | 0d |  |  | 104h | 3,120 |
| 32 | 2.2.1 | 用户登录 | manual | 3d | 2024-04-16 | 2024-04-18 | 2 | 2024-04-22 | 2024-04-22 | 1d |  |  | 李一柯; 宋瑜航 | 48h | 1,440 |
| 33 | 2.2.2 | 用户注册 | manual | 2d | 2024-04-19 | 2024-04-22 | 32 | 2024-04-23 | 2024-04-23 | 1d |  |  | 李一柯; 宋瑜航 | 32h | 960 |
| 34 | 2.2.3 | 账号验证 | manual | 3d | 2024-04-23 | 2024-04-25 | 32, 33, 60, 61 | 2024-04-29 | 2024-04-29 | 1d? |  |  | 宋瑜航 | 24h | 720 |
| 35 | 3 | **数据上报** |  | 5d? | 2024-04-24 | 2024-04-30 |  | 2024-04-24 | 2024-04-30 | 5d? | 0d |  |  | 64h | 1,920 |
| 36 | 3.1 | 企业备案 |  | 1d? | 2024-04-24 | 2024-04-24 | 2 | 2024-04-24 | 2024-04-24 | 1d? | 0d |  | 郑俊烽 | 8h | 240 |
| 37 | 3.2 | 报表审核 |  | 2d? | 2024-04-25 | 2024-04-26 | 36 | 2024-04-25 | 2024-04-26 | 2d? | 0d |  | 王正东; 彭炳桥 | 24h | 720 |
| 38 | 3.3 | 报表选择 |  | 1d? | 2024-04-29 | 2024-04-29 | 36, 37 | 2024-04-29 | 2024-04-29 | 1d? | 0d |  | 冯韵涵; 邱子晴 | 16h | 480 |
| 39 | 3.4 | 数据上报 |  | 1d? | 2024-04-30 | 2024-04-30 | 38 | 2024-04-30 | 2024-04-30 | 1d? | 0d |  | 王正东; 宋瑜航 | 16h | 480 |
| 40 | 4 | **数据管理** |  | 4d? | 2024-05-01 | 2024-05-06 |  | 2024-05-01 | 2024-05-02 | 2d? | 0d |  |  | 48h | 1,440 |
| 41 | 4.1 | 报表管理 |  | 3d | 2024-05-01 | 2024-05-03 | 35 | 2024-05-01 | 2024-05-01 | 1d? | 0d |  | 李一柯 | 24h | 720 |
| 42 | 4.2 | 数据修改 |  | 1d | 2024-05-06 | 2024-05-06 | 41 | 2024-05-02 | 2024-05-02 | 1d? | 0d |  | 彭炳桥 | 8h | 240 |
| 43 | 4.3 | 数据删除 |  | 1d? | 2024-05-06 | 2024-05-06 | 41 | 2024-05-02 | 2024-05-02 | 1d? | 0d |  | 王正东 | 8h | 240 |
| 44 | 4.4 | 数据还原 |  | 1d? | 2024-05-06 | 2024-05-06 | 41 | 2024-05-02 | 2024-05-02 | 1d? | 0d |  | 宋瑜航 | 8h | 240 |
| 45 | 5 | **数据可视化** |  | 10d? | 2024-05-08 | 2024-05-21 |  | 2024-05-06 | 2024-05-17 | 10d? | 0d |  |  | 280h | 8,400 |
| 46 | 5.1 | 数据查询 |  | 1d? | 2024-05-08 | 2024-05-08 | 35, 40, 63, 64 | 2024-05-06 | 2024-05-06 | 1d? | 0d |  | 李一柯; 彭炳桥 | 16h | 480 |
| 47 | 5.2 | 多维分析 |  | 8d | 2024-05-09 | 2024-05-20 | 46 | 2024-05-07 | 2024-05-16 | 8d | 0d |  | 冯韵涵; 李一柯; 邱子晴; 宋瑜航 | 256h | 7,680 |
| 48 | 5.3 | 数据导出 |  | 1d | 2024-05-21 | 2024-05-21 | 47 | 2024-05-17 | 2024-05-17 | 1d | 0d |  | 李一柯 | 8h | 240 |
| 49 | 6 | **通知模块** |  | 4d | 2024-05-22 | 2024-05-27 |  | 2024-05-20 | 2024-05-23 | 4d | 0d |  |  | 32h | 960 |
| 50 | 6.1 | 时限验证 |  | 1d | 2024-05-22 | 2024-05-22 | 45 | 2024-05-20 | 2024-05-20 | 1d | 0d |  | 李一柯 | 8h | 240 |
| 51 | 6.2 | 通知发布 |  | 1d | 2024-05-23 | 2024-05-23 | 50 | 2024-05-21 | 2024-05-21 | 1d | 0d |  | 彭炳桥 | 8h | 240 |
| 52 | 6.3 | 通知发布 |  | 1d | 2024-05-24 | 2024-05-24 | 51 | 2024-05-22 | 2024-05-22 | 1d | 0d |  | 邱子晴 | 8h | 240 |
| 53 | 6.4 | 查看通知 |  | 1d | 2024-05-27 | 2024-05-27 | 52 | 2024-05-23 | 2024-05-23 | 1d | 0d |  | 宋瑜航 | 8h | 240 |

| ID | WBS | Task | Type | Duration | Start | Finish | Predecessors | Baseline start | Baseline finish | Baseline duration | Total slack | Free slack | Constraint | Resources | Work | Cost |
| --- | --- | --- | --- | --- | --- | --- | --- | --- | --- | --- | --- | --- | --- | --- | --- | --- |
| 54 | 7 | **单元测试流** |  | 36d | 2024-04-09 | 2024-05-28 |  | 2024-04-11 | 2024-05-24 | 31.1d | 0d |  |  |  | 232h | 9,849 |
| 55 | 7.1 | 服务器测试环境准备 | manual | 2d | 2024-04-09 | 2024-04-10 |  |  |  |  |  |  |  | 金弋杰 | 16h | 961 |
| 56 | 7.2 | 服务器稳定性测试 |  | 2d | 2024-04-11 | 2024-04-15 | 3, 9, 12, 13, 14, 15, 16, 17, 18, 19, 20, 55 | 2024-04-11 | 2024-04-15 | 2d | 30.1d | 4.1d |  | 金弋杰; 乔凯星; 周扬 | 48h | 1,921 |
| 57 | 7.3 | 历史记录测试准备 | manual | 2d | 2024-04-17 | 2024-04-18 | 6, 7, 8, 10 |  |  |  |  |  |  | 金弋杰 | 16h | 961 |
| 58 | 7.4 | 历史记录测试 |  | 2d | 2024-04-16 | 2024-04-17 | 3, 4, 6, 7, 8, 9, 10, 11, 12, 13, 14, 15, 16, 17, 18, 19, 20, 21, 22, 23 | 2024-04-17 | 2024-04-18 | 2d | 28d | 2d |  | 周扬 | 16h | 480 |
| 59 | 7.5 | 数据库权限测试 |  | 1d | 2024-04-16 | 2024-04-16 | 4, 28 | 2024-04-17 | 2024-04-18 | 1d | 31d |  |  | 乔凯星 | 8h | 240 |
| 60 | 7.6 | 数据库新增企业用户测试 |  | 1d | 2024-04-23 | 2024-04-24 | 33 | 2024-04-24 | 2024-04-24 | 1d | 19d | 0d |  | 金弋杰; 乔凯星; 周扬 | 24h | 961 |
| 61 | 7.7 | 用户登录测试 |  | 1d | 2024-04-25 | 2024-04-25 | 32, 33 | 2024-04-26 | 2024-04-26 | 1d | 18d | 0d |  | 金弋杰; 乔凯星; 周扬 | 24h | 961 |
| 62 | 7.8 | 用户视图测试 |  | 1d | 2024-04-29 | 2024-04-29 | 24, 25, 26, 27, 28, 29, 30, 31, 32, 33, 34 | 2024-05-02 | 2024-05-02 | 1d | 22d |  |  | 金弋杰; 乔凯星; 周扬 | 24h | 961 |
| 63 | 7.9 | 数据上传测试 |  | 1d | 2024-05-01 | 2024-05-01 | 35 | 2024-05-01 | 2024-05-01 | 1d | 3d |  |  | 金弋杰; 乔凯星 | 16h | 721 |
| 64 | 7.10 | 数据修改测试 |  | 1d | 2024-05-07 | 2024-05-07 | 35, 40, 63 | 2024-05-03 | 2024-05-03 | 1d | 0d |  |  | 金弋杰; 乔凯星; 周扬 | 24h | 961 |
| 65 | 7.11 | 数据可视化测试 |  | 1d | 2024-05-22 | 2024-05-22 | 45 | 2024-05-20 | 2024-05-20 | 1d | 5d |  |  | 周扬 | 8h | 240 |
| 66 | 7.12 | 通知模块测试 |  | 1d | 2024-05-28 | 2024-05-28 | 49 | 2024-05-24 | 2024-05-24 | 1d | 0d |  |  | 金弋杰 | 8h | 481 |
| 67 | 8 | **集成测试流** |  | 26d | 2024-04-22 | 2024-05-27 |  | 2024-04-22 | 2024-05-22 | 23d | 2d | 1d |  |  | 128h | 5,283 |
| 68 | 8.1 | 测试系统监测体系 |  | 2d | 2024-04-22 | 2024-04-23 | 2, 56, 58 | 2024-04-22 | 2024-04-23 | 2d | 26d | 25d |  | 金弋杰; 乔凯星; 周扬 | 48h | 1,921 |
| 69 | 8.2 | 注册登录体系 |  | 1d | 2024-04-26 | 2024-04-26 | 27, 28, 29, 30, 31, 32, 33, 34 | 2024-04-30 | 2024-04-30 | 1d | 23d |  |  | 乔凯星; 周扬 | 16h | 480 |
| 70 | 8.3 | 数据管理体系 |  | 3d | 2024-05-22 | 2024-05-24 | 35, 40, 45 | 2024-05-20 | 2024-05-22 | 3d | 3d |  |  | 金弋杰; 乔凯星 | 48h | 2,161 |
| 71 | 8.4 | 数据可视化体系 | manual | 1d | 2024-05-24 | 2024-05-24 | 45 | 2024-04-22 | 2024-04-22 | 1d? |  |  |  | 周扬 | 8h | 240 |
| 72 | 8.5 | 通知体系 | manual | 1d | 2024-05-27 | 2024-05-27 | 66 |  |  |  |  |  |  | 金弋杰 | 8h | 481 |
| 73 | 9 | 系统测试 |  | 5d | 2024-05-29 | 2024-06-04 | 40, 45, 49, 54, 67, 68 | 2024-05-27 | 2024-06-05 | 8d | 1d |  | start no earlier than 2024-05-28 | 金弋杰; 乔凯星; 周扬 | 120h | 4,801 |
| 75 | 10 | 实施 | manual | 2d | 2024-06-06 | 2024-06-07 | 73 | 2024-06-06 | 2024-06-07 | 2d |  |  |  | 廖文远; 冯韵涵; 金弋杰; 李一柯; 彭炳桥; 乔凯星; 邱子晴; 宋瑜航; 王正东; 郑俊烽; 周扬 | 176h | 6,721 |
| 77 | 11 | 服务器运行 | manual | 43d | 2024-04-10 | 2024-06-07 | 3 |  |  |  |  |  |  | 备份服务器; 测试服务器; 应用服务器 | 1032h | 1,032 |
| 78 | 12 | 数据库运行 | manual | 44d | 2024-04-09 | 2024-06-07 | 4 |  |  |  |  |  |  | 备份数据库; 主数据库 | 704h | 704 |
